# Práctica GPT

Schedule from MS Project, 2012-03-28 to 2012-07-11, costs in €.

## Calendars

- Standard: Mon-Fri 08:00-12:00, 13:00-17:00; Sat-Sun off.

## Resources

| Resource | Rate | Cost per use |
| --- | --- | --- |
| Consultor especializado en ITIL | 38.79 |  |
| Becario Junior 1 | 9.31 |  |
| Becario Junior 2 | 9.31 |  |
| Proveedor A |  | 1125000 |
| Consultor senior Ingeniero Informatico 3 (Externo) | 56.25 |  |
| Consultor senior Ingeniero Informatico 1 | 41.38 |  |
| Consultor senior Ingeniero Informatico 2 | 41.38 |  |
| Consultor senior Ingeniero Informatico 4 (Externo) | 56.25 |  |

## Schedule

| ID | WBS | Task | Type | Duration | Start | Finish | Predecessors | Total slack | Resources | Work | Cost |
| --- | --- | --- | --- | --- | --- | --- | --- | --- | --- | --- | --- |
| 1 | 1 | **Proyecto entidad financiera** |  | 75.89d | 2012-03-28 | 2012-07-11 |  | 0d |  | 2736.75h | 1,213,845.98 |
| 2 | 1.1 | **Analizar la actividad actual** |  | 6.1d | 2012-03-28 | 2012-04-05 |  | 0d |  | 161.28h | 5,541.76 |
| 3 | 1.1.1 | [HITO] Inicio del Analisis | milestone | 0d | 2012-03-28 | 2012-03-28 |  | 0d |  |  |  |
| 4 | 1.1.2 | **Entrevistas** |  | 2d | 2012-03-28 | 2012-03-29 |  | 0d |  | 55.2h | 1,883.55 |
| 5 | 1.1.2.1 | Entrevistas con el cliente |  | 1.5d | 2012-03-28 | 2012-03-29 | 3 | 0d | Becario Junior 1 [40%]; Becario Junior 2 [40%]; Consultor especializado en ITIL; Consultor senior Ingeniero Informatico 1; Consultor senior Ingeniero Informatico 2 | 45.6h | 1,547.98 |
| 6 | 1.1.2.2 | Identificacion de los Stakeholders |  | 0.5d | 2012-03-29 | 2012-03-29 | 5 | 0d | Consultor especializado en ITIL; Becario Junior 2 [40%]; Consultor senior Ingeniero Informatico 2 | 9.6h | 335.58 |
| 7 | 1.1.3 | **Agrupar documentación** |  | 0.5d | 2012-03-30 | 2012-03-30 |  | 0d |  | 13.6h | 501.1 |
| 8 | 1.1.3.1 | Estudio preliminar de las actividades realizadas |  | 0.5d | 2012-03-30 | 2012-03-30 | 6 | 0d | Becario Junior 1 [40%]; Consultor senior Ingeniero Informatico 1; Consultor senior Ingeniero Informatico 2; Consultor especializado en ITIL | 13.6h | 501.1 |
| 9 | 1.1.4 | **Analizar documentacion** |  | 0.5d | 2012-03-30 | 2012-03-30 |  | 0d |  | 5.6h | 180.42 |
| 10 | 1.1.4.1 | Presentación |  | 0.5d | 2012-03-30 | 2012-03-30 | 8 | 0d | Becario Junior 1 [40%]; Consultor senior Ingeniero Informatico 1 | 5.6h | 180.42 |
| 11 | 1.1.4.2 | [HITO] Aceptación de la documentacion recogida | milestone | 0d | 2012-03-30 | 2012-03-30 | 10 | 0d |  |  |  |
| 12 | 1.1.5 | **Informe** |  | 3.1d | 2012-04-02 | 2012-04-05 |  | 0d |  | 86.88h | 2,976.69 |
| 13 | 1.1.5.1 | Borrador |  | 0.5d | 2012-04-02 | 2012-04-02 | 11 | 0d | Becario Junior 1 [40%]; Becario Junior 2 [40%]; Consultor especializado en ITIL; Consultor senior Ingeniero Informatico 2; Consultor senior Ingeniero Informatico 1 | 15.2h | 515.99 |
| 14 | 1.1.5.2 | Aceptacion del borrador |  | 0.2d | 2012-04-02 | 2012-04-02 | 13 | 0d | Becario Junior 1; Consultor senior Ingeniero Informatico 1 | 3.2h | 128.27 |
| 15 | 1.1.5.3 | Prepararación |  | 2d | 2012-04-02 | 2012-04-04 | 14 | 0d | Becario Junior 1 [40%]; Becario Junior 2 [40%]; Consultor especializado en ITIL; Consultor senior Ingeniero Informatico 2; Consultor senior Ingeniero Informatico 1 | 60.8h | 2,063.97 |
| 16 | 1.1.5.4 | Aprobacion |  | 0.2d | 2012-04-04 | 2012-04-04 | 15 | 0d | Consultor especializado en ITIL; Consultor senior Ingeniero Informatico 1; Becario Junior 1 [40%] | 3.84h | 134.23 |
| 17 | 1.1.5.5 | Entrega del documento |  | 0.2d | 2012-04-04 | 2012-04-05 | 16 | 0d | Consultor especializado en ITIL; Consultor senior Ingeniero Informatico 1; Becario Junior 1 [40%] | 3.84h | 134.23 |
| 18 | 1.1.6 | [HITO] Finalización | milestone | 0d | 2012-04-05 | 2012-04-05 | 17 | 0d |  |  |  |
| 19 | 1.2 | **Definir el modelo de datos y la especificación de requisitos de la CMDB** |  | 10.4d | 2012-04-05 | 2012-04-19 |  | 0d |  | 202.08h | 6,519.98 |
| 20 | 1.2.1 | [HITO] Inicio de la definicion | milestone | 0d | 2012-04-05 | 2012-04-05 | 18 | 0d |  |  |  |
| 21 | 1.2.2 | **Obtencion informacion CI's** |  | 4.5d | 2012-04-05 | 2012-04-11 |  | 0d |  | 38.4h | 973.25 |
| 22 | 1.2.2.1 | Identificar familia de CI's |  | 1.5d | 2012-04-05 | 2012-04-06 | 20 | 0d | Becario Junior 1 [20%]; Becario Junior 2 [20%]; Consultor senior Ingeniero Informatico 1 [20%]; Consultor senior Ingeniero Informatico 2 [20%] | 9.6h | 243.31 |
| 23 | 1.2.2.2 | Identificar atributos que vamos a recopilar de cada CI's |  | 1.5d | 2012-04-05 | 2012-04-06 | 20 | 0d | Becario Junior 1 [20%]; Becario Junior 2 [20%]; Consultor senior Ingeniero Informatico 1 [20%]; Consultor senior Ingeniero Informatico 2 [20%] | 9.6h | 243.31 |
| 24 | 1.2.2.3 | Identificar la fuente de datos de cada CI's |  | 1.5d | 2012-04-05 | 2012-04-06 | 20 | 0d | Becario Junior 1 [20%]; Becario Junior 2 [20%]; Consultor senior Ingeniero Informatico 1 [20%]; Consultor senior Ingeniero Informatico 2 [20%] | 9.6h | 243.31 |
| 25 | 1.2.2.4 | Identificar datos a integrar |  | 1.5d | 2012-04-05 | 2012-04-06 | 20 | 0d | Becario Junior 1 [20%]; Becario Junior 2 [20%]; Consultor senior Ingeniero Informatico 1 [20%]; Consultor senior Ingeniero Informatico 2 [20%] | 9.6h | 243.31 |
| 26 | 1.2.2.5 | Identificar relaciones entre CI's |  | 3d | 2012-04-06 | 2012-04-11 | 22, 23, 24, 25 | 0d |  |  |  |

| ID | WBS | Task | Type | Duration | Start | Finish | Predecessors | Total slack | Resources | Work | Cost |
| --- | --- | --- | --- | --- | --- | --- | --- | --- | --- | --- | --- |
| 27 | 1.2.3 | **Informe de modelo de datos** |  | 2.9d | 2012-04-11 | 2012-04-16 |  | 0d |  | 78.08h | 2,631.2 |
| 28 | 1.2.3.1 | Preparar borrador informe |  | 0.5d | 2012-04-11 | 2012-04-12 | 26 | 0d | Becario Junior 1 [40%]; Becario Junior 2 [40%]; Consultor senior Ingeniero Informatico 2; Consultor senior Ingeniero Informatico 1 | 11.2h | 360.83 |
| 29 | 1.2.3.2 | Aceptacion del borrador |  | 0.2d | 2012-04-12 | 2012-04-12 | 28 | 0d | Consultor senior Ingeniero Informatico 1; Becario Junior 1 [40%] | 2.24h | 72.17 |
| 30 | 1.2.3.3 | Preparar informe |  | 2d | 2012-04-12 | 2012-04-16 | 29 | 0d | Becario Junior 1 [40%]; Becario Junior 2 [40%]; Consultor especializado en ITIL; Consultor senior Ingeniero Informatico 2; Consultor senior Ingeniero Informatico 1 | 60.8h | 2,063.97 |
| 31 | 1.2.3.4 | Aprobacion del informe |  | 0.2d | 2012-04-16 | 2012-04-16 | 30 | 0d | Consultor especializado en ITIL; Consultor senior Ingeniero Informatico 1; Becario Junior 1 [40%] | 3.84h | 134.23 |
| 32 | 1.2.3.5 | [HITO] Aceptacion de la documentacion recogida | milestone | 0d | 2012-04-16 | 2012-04-16 | 31 | 0d |  |  |  |
| 33 | 1.2.4 | **Informe de especificacion de requisitos** |  | 2.9d | 2012-04-16 | 2012-04-19 |  | 0d |  | 83.68h | 2,848.42 |
| 34 | 1.2.4.1 | Preparar borrador informe |  | 0.5d | 2012-04-16 | 2012-04-16 | 32 | 0d | Becario Junior 1 [40%]; Becario Junior 2 [40%]; Consultor especializado en ITIL; Consultor senior Ingeniero Informatico 2; Consultor senior Ingeniero Informatico 1 | 15.2h | 515.99 |
| 35 | 1.2.4.2 | Aceptacion del borrador |  | 0.2d | 2012-04-17 | 2012-04-17 | 34 | 0d | Consultor especializado en ITIL; Consultor senior Ingeniero Informatico 1; Becario Junior 1 [40%] | 3.84h | 134.23 |
| 36 | 1.2.4.3 | Preparar informe |  | 2d | 2012-04-17 | 2012-04-19 | 35 | 0d | Becario Junior 1 [40%]; Becario Junior 2 [40%]; Consultor especializado en ITIL; Consultor senior Ingeniero Informatico 2; Consultor senior Ingeniero Informatico 1 | 60.8h | 2,063.97 |
| 37 | 1.2.4.4 | Aprobacion del informe |  | 0.2d | 2012-04-19 | 2012-04-19 | 36 | 0d | Consultor especializado en ITIL; Consultor senior Ingeniero Informatico 1; Becario Junior 1 [40%] | 3.84h | 134.23 |
| 38 | 1.2.4.5 | [HITO] Aceptación | milestone | 0d | 2012-04-19 | 2012-04-19 | 37 | 0d | Becario Junior 1 [40%]; Becario Junior 2 [40%]; Consultor especializado en ITIL; Consultor senior Ingeniero Informatico 2; Consultor senior Ingeniero Informatico 1 |  |  |
| 39 | 1.2.5 | Entrega del documento de la especificacion de requisitos y modelo de datos |  | 0.1d | 2012-04-19 | 2012-04-19 | 38 | 0d | Consultor especializado en ITIL; Consultor senior Ingeniero Informatico 1; Becario Junior 1 [40%] | 1.92h | 67.12 |
| 40 | 1.2.6 | [HITO] Finalizacion de la definicion | milestone | 0d | 2012-04-19 | 2012-04-19 | 39 | 0d |  |  |  |
| 41 | 1.3 | **Definir las fuentes de datos y el mecanismo de obtención de los mismos** |  | 8d | 2012-04-19 | 2012-05-01 |  | 0d |  | 222.4h | 7,071.82 |
| 42 | 1.3.1 | [HITO] Inicio de la definicion | milestone | 0d | 2012-04-19 | 2012-04-19 | 40 | 0d |  |  |  |
| 43 | 1.3.2 | **Diseño de arquitecturas** |  | 5.5d | 2012-04-19 | 2012-04-26 |  | 0d |  | 162.4h | 5,112.5 |
| 44 | 1.3.2.1 | Investigar la mejor solución para obtener los datos |  | 2d | 2012-04-19 | 2012-04-23 | 42 | 0d | Becario Junior 1 [40%]; Becario Junior 2 [40%]; Consultor especializado en ITIL; Consultor senior Ingeniero Informatico 2; Consultor senior Ingeniero Informatico 1 | 60.8h | 2,063.97 |
| 45 | 1.3.2.2 | Probar las distintas soluciones |  | 2d | 2012-04-23 | 2012-04-25 | 44 | 0d | Becario Junior 1 [50%]; Becario Junior 2 [50%]; Consultor senior Ingeniero Informatico 1 [50%]; Consultor senior Ingeniero Informatico 2 [25%] | 28h | 645.52 |
| 46 | 1.3.2.3 | Validar las distintas soluciones |  | 2d | 2012-04-23 | 2012-04-25 | 45FF | 0d | Becario Junior 1 [50%]; Becario Junior 2 [50%]; Consultor senior Ingeniero Informatico 1 [50%]; Consultor senior Ingeniero Informatico 2 [25%] | 28h | 645.52 |
| 47 | 1.3.2.4 | Preparar un informe con las distintas soluciones |  | 1.5d | 2012-04-25 | 2012-04-26 | 46, 44 | 0d | Becario Junior 1 [40%]; Consultor senior Ingeniero Informatico 1; Becario Junior 2 [40%]; Consultor senior Ingeniero Informatico 2; Consultor senior Ingeniero Informatico 3 (Externo) | 45.6h | 1,757.5 |
| 48 | 1.3.3 | **Entrevistas con el cliente** |  | 0.5d | 2012-04-27 | 2012-04-27 |  | 0d |  | 15.2h | 515.99 |
| 49 | 1.3.3.1 | Validar con el cliente la solución de obtencion de datos |  | 0.5d | 2012-04-27 | 2012-04-27 | 47 | 0d | Becario Junior 1 [40%]; Becario Junior 2 [40%]; Consultor especializado en ITIL; Consultor senior Ingeniero Informatico 2; Consultor senior Ingeniero Informatico 1 | 15.2h | 515.99 |
| 50 | 1.3.4 | Definición del documento de arquitectura de datos |  | 1d | 2012-04-27 | 2012-04-30 | 48 | 0d | Becario Junior 1 [40%]; Becario Junior 2 [40%]; Consultor senior Ingeniero Informatico 1; Consultor senior Ingeniero Informatico 2 | 22.4h | 721.66 |
| 51 | 1.3.5 | [HITO] Finalización de la definiciónn | milestone | 0d | 2012-04-30 | 2012-04-30 | 50 | 0d | Becario Junior 1 |  |  |
| 52 | 1.3.6 | Empezar la extracción de datos de los CI's |  | 1d | 2012-04-30 | 2012-05-01 | 51 | 0d | Becario Junior 1 [40%]; Becario Junior 2 [40%]; Consultor senior Ingeniero Informatico 1; Consultor senior Ingeniero Informatico 2 | 22.4h | 721.66 |

| ID | WBS | Task | Type | Duration | Start | Finish | Predecessors | Total slack | Resources | Work | Cost |
| --- | --- | --- | --- | --- | --- | --- | --- | --- | --- | --- | --- |
| 53 | 1.4 | **Implementar el sistema de gestión de la configuración** |  | 29.39d | 2012-05-01 | 2012-06-11 |  | 0d |  | 1375.79h | 1,165,564.81 |
| 54 | 1.4.1 | [HITO] Inicio de la implementacion | milestone | 0d | 2012-05-01 | 2012-05-01 | 52 | 0d | Becario Junior 1 [40%]; Becario Junior 2 [40%]; Consultor senior Ingeniero Informatico 1; Consultor senior Ingeniero Informatico 2; Consultor senior Ingeniero Informatico 3 (Externo); Consultor especializado en ITIL [30%] |  |  |
| 55 | 1.4.2 | Definir el mecanismo de integración de la CMBD |  | 4d | 2012-05-01 | 2012-05-07 | 54 | 0d | Becario Junior 1; Becario Junior 2; Consultor senior Ingeniero Informatico 1; Consultor senior Ingeniero Informatico 3 (Externo); Consultor senior Ingeniero Informatico 4 (Externo) | 160h | 5,520 |
| 56 | 1.4.3 | Definir reglas de conciliación |  | 20d | 2012-05-07 | 2012-06-04 | 55 | 0d | Becario Junior 1; Becario Junior 2; Consultor senior Ingeniero Informatico 1; Consultor senior Ingeniero Informatico 3 (Externo); Consultor senior Ingeniero Informatico 4 (Externo) | 800h | 27,600 |
| 57 | 1.4.4 | Configurar y parametrizar la solución |  | 5.39d | 2012-06-04 | 2012-06-11 | 56 | 0d | Becario Junior 1; Becario Junior 2; Consultor senior Ingeniero Informatico 1; Consultor senior Ingeniero Informatico 3 (Externo); Consultor senior Ingeniero Informatico 4 (Externo) | 215.79h | 7,444.81 |
| 58 | 1.4.5 | Implementación (externo) |  | 25d | 2012-05-01 | 2012-06-05 | 54 | 4.39d | Proveedor A | 200h | 1,125,000 |
| 59 | 1.5 | **Probar el sistema de gestión de la configuración** |  | 10d | 2012-06-11 | 2012-06-25 |  | 0d |  | 383.2h | 14,170.15 |
| 60 | 1.5.1 | [HITO] Inicio de las pruebas | milestone | 0d | 2012-06-11 | 2012-06-11 | 58, 55, 56, 57 | 0d |  |  |  |
| 61 | 1.5.2 | **Definir plan de pruebas** |  | 4d | 2012-06-11 | 2012-06-15 |  | 0d |  | 192h | 6,844.16 |
| 62 | 1.5.2.1 | Plan de pruebas para la identificacion de CI's |  | 4d | 2012-06-11 | 2012-06-15 | 60 | 0d | Becario Junior 1; Consultor senior Ingeniero Informatico 1 | 64h | 1,622.08 |
| 63 | 1.5.2.2 | Plan de pruebas para la implementacion de la CMBD |  | 4d | 2012-06-11 | 2012-06-15 | 60 | 0d | Becario Junior 2; Consultor senior Ingeniero Informatico 2 | 64h | 1,622.08 |
| 64 | 1.5.2.3 | Plan de pruebas para la aplicación en tiempo real |  | 4d | 2012-06-11 | 2012-06-15 | 60 | 0d | Consultor senior Ingeniero Informatico 3 (Externo); Consultor senior Ingeniero Informatico 4 (Externo) | 64h | 3,600 |
| 65 | 1.5.6 | Presentar plan de pruebas |  | 0.5d | 2012-06-15 | 2012-06-18 | 62, 63, 64 | 0d | Becario Junior 1 [40%]; Becario Junior 2 [40%]; Consultor senior Ingeniero Informatico 1; Consultor senior Ingeniero Informatico 2; Consultor senior Ingeniero Informatico 3 (Externo); Consultor especializado en ITIL [30%] | 16.4h | 632.38 |
| 66 | 1.5.7 | Recoger feedback |  | 1d | 2012-06-18 | 2012-06-19 | 65 | 0d | Consultor especializado en ITIL; Consultor senior Ingeniero Informatico 1; Consultor senior Ingeniero Informatico 2; Becario Junior 2 [40%] | 27.2h | 1,002.19 |
| 67 | 1.5.12 | Modificar plan de pruebas original con el nuevo feedback |  | 1d | 2012-06-19 | 2012-06-20 | 66 | 0d | Becario Junior 1 [40%]; Becario Junior 2 [40%]; Consultor senior Ingeniero Informatico 1; Consultor senior Ingeniero Informatico 2; Consultor senior Ingeniero Informatico 3 (Externo); Consultor especializado en ITIL [30%] | 32.8h | 1,264.76 |
| 68 | 1.5.9 | Interpretar resultados de las pruebas |  | 1.5d | 2012-06-20 | 2012-06-21 | 67 | 0d | Becario Junior 1 [40%]; Becario Junior 2 [40%]; Consultor senior Ingeniero Informatico 1; Consultor senior Ingeniero Informatico 2; Consultor senior Ingeniero Informatico 3 (Externo); Consultor especializado en ITIL [30%] | 49.2h | 1,897.14 |
| 69 | 1.5.10 | Preparar informe con el resultado de las pruebas |  | 2d | 2012-06-21 | 2012-06-25 | 68 | 0d | Becario Junior 1 [40%]; Becario Junior 2 [40%]; Consultor senior Ingeniero Informatico 1; Consultor senior Ingeniero Informatico 2; Consultor senior Ingeniero Informatico 3 (Externo); Consultor especializado en ITIL [30%] | 65.6h | 2,529.52 |
| 70 | 1.5.11 | [HITO] Finalizacion de las pruebas | milestone | 0d | 2012-06-25 | 2012-06-25 | 69 | 0d |  |  |  |
| 71 | 1.6 | **Importar datos de las herramientas de descubrimiento** |  | 9d | 2012-06-25 | 2012-07-06 |  | 0d |  | 312h | 11,844.02 |
| 72 | 1.6.1 | [HITO] Inicio de la importacion | milestone | 0d | 2012-06-25 | 2012-06-25 | 70 | 0d |  |  |  |
| 73 | 1.6.2 | Definir plan de importacion |  | 2d | 2012-06-25 | 2012-06-27 | 72 | 0d | Becario Junior 1 [40%]; Becario Junior 2 [40%]; Consultor senior Ingeniero Informatico 1; Consultor senior Ingeniero Informatico 2; Consultor senior Ingeniero Informatico 3 (Externo); Consultor especializado en ITIL [30%] | 65.6h | 2,529.52 |
| 74 | 1.6.3 | Localizar y comprobar la evolucion de la importacion |  | 5d | 2012-06-27 | 2012-07-04 | 73 | 0d | Becario Junior 1 [40%]; Becario Junior 2 [40%]; Consultor senior Ingeniero Informatico 1; Consultor senior Ingeniero Informatico 2; Consultor senior Ingeniero Informatico 3 (Externo); Consultor especializado en ITIL [30%] | 164h | 6,323.8 |
| 75 | 1.6.4 | Pruebas de la aplicación en tiempo real |  | 2d | 2012-07-04 | 2012-07-06 | 74 | 3d | Consultor senior Ingeniero Informatico 1; Consultor senior Ingeniero Informatico 3 (Externo); Becario Junior 1 | 48h | 1,711.04 |
| 76 | 1.6.5 | Verificar la correcta recepcion de datos de la CMBD |  | 1d | 2012-07-04 | 2012-07-05 | 74 | 0d | Becario Junior 2; Consultor senior Ingeniero Informatico 2; Consultor senior Ingeniero Informatico 4 (Externo) | 24h | 855.52 |
| 77 | 1.6.6 | Entrega del documento de la importacion de datos |  | 1d | 2012-07-05 | 2012-07-06 | 76 | 0d | Consultor senior Ingeniero Informatico 2; Consultor especializado en ITIL [30%] | 10.4h | 424.14 |
| 78 | 1.6.7 | [HITO] Finalizacion de la importacion | milestone | 0d | 2012-07-06 | 2012-07-06 | 77 | 0d |  |  |  |

| ID | WBS | Task | Type | Duration | Start | Finish | Predecessors | Total slack | Resources | Work | Cost |
| --- | --- | --- | --- | --- | --- | --- | --- | --- | --- | --- | --- |
| 79 | 1.7 | **Realizar el Go live y apoyo pos-implementacion** |  | 3d | 2012-07-06 | 2012-07-11 |  | 0d |  | 80h | 3,133.44 |
| 80 | 1.7.1 | [HITO] Inicio del apoyo pos-implementacion | milestone | 0d | 2012-07-06 | 2012-07-06 | 78 | 0d | Becario Junior 1; Consultor senior Ingeniero Informatico 1 |  |  |
| 81 | 1.7.2 | Observar la aplicación en funcionamiento |  | 2d | 2012-07-06 | 2012-07-10 | 80 | 0d | Becario Junior 2; Consultor senior Ingeniero Informatico 2 | 32h | 811.04 |
| 82 | 1.7.3 | Pruebas finales |  | 2d | 2012-07-06 | 2012-07-10 | 80 | 0d | Consultor senior Ingeniero Informatico 3 (Externo) | 16h | 900 |
| 83 | 1.7.4 | Reunion con los usuarios |  | 1d | 2012-07-06 | 2012-07-09 | 80 | 1d | Consultor senior Ingeniero Informatico 4 (Externo); Consultor especializado en ITIL | 16h | 760.32 |
| 84 | 1.7.5 | Realizar ajustes de control |  | 1d | 2012-07-10 | 2012-07-11 | 81, 82, 83 | 0d | Consultor senior Ingeniero Informatico 1; Consultor senior Ingeniero Informatico 2 | 16h | 662.08 |
| 85 | 1.7.6 | [HITO] Finalizacion del apoyo pos-implementacion | milestone | 0d | 2012-07-11 | 2012-07-11 | 84 | 0d |  |  |  |
