# Cronograma

Schedule from MS Project, 2011-05-16 to 2012-02-20, costs in €.

## Calendars

- Estándar: Mon-Fri 09:00-13:00, 15:00-19:00; Sat-Sun off.

## Resources

| Resource | Rate |
| --- | --- |
| Jefe de Proyecto | 27.5 |
| Consultor de Procesos ITIL | 19.73 |
| Administrador BBDD | 26.31 |
| Analista | 19.73 |
| Programador Senior 1 | 16.44 |
| Programados Senior 2 | 16.44 |
| Programador Junior | 13.15 |
| Diseñador Web | 13.15 |
| Becario | 6.57 |
| Director de Ingeniería | 21.5 |

## Schedule

| ID | WBS | Task | Type | Duration | Start | Finish | Predecessors | Baseline start | Baseline finish | Baseline duration | Total slack | Resources | Work | Cost | Baseline cost |
| --- | --- | --- | --- | --- | --- | --- | --- | --- | --- | --- | --- | --- | --- | --- | --- |
| 1 | 1 | **INICIACIÓN** |  | 11d | 2011-05-16 | 2011-05-30 |  | 2011-05-16 | 2011-05-30 | 11d | 0d |  | 240h | 5,054.48 | 5,054.48 |
| 2 | 1.1 | **Desarrollo de Acta del Proyecto** |  | 5d | 2011-05-16 | 2011-05-20 |  | 2011-05-16 | 2011-05-20 | 5d | 0d |  | 96h | 2,261.52 | 2,261.52 |
| 3 | 1.1.1 | Estudio preliminar del Proyecto |  | 3d | 2011-05-16 | 2011-05-18 |  | 2011-05-16 | 2011-05-18 | 3d | 0d | Director de Ingeniería; Analista; Jefe de Proyecto | 72h | 1,649.52 | 1,649.52 |
| 4 | 1.1.2 | Aceptación |  | 1d | 2011-05-19 | 2011-05-19 | 3 | 2011-05-19 | 2011-05-19 | 1d | 0d | Director de Ingeniería; Jefe de Proyecto | 16h | 392 | 392 |
| 5 | 1.1.3 | Aprobación del Acta de constitución |  | 1d | 2011-05-20 | 2011-05-20 | 4 | 2011-05-20 | 2011-05-20 | 1d | 0d | Jefe de Proyecto | 8h | 220 | 220 |
| 6 | 1.2 | Identificación de Stakeholders |  | 2d | 2011-05-23 | 2011-05-24 | 2 | 2011-05-23 | 2011-05-24 | 2d | 0d | Analista; Consultor de Procesos ITIL; Jefe de Proyecto | 48h | 1,071.36 | 1,071.36 |
| 7 | 1.3 | Enunciado del Alcance |  | 4d | 2011-05-25 | 2011-05-30 | 6 | 2011-05-25 | 2011-05-30 | 4d | 0d | Jefe de Proyecto; Becario; Analista | 96h | 1,721.6 | 1,721.6 |
| 8 | 1.4 | HITO: INICIACIÓN TERMINADA | milestone | 0d | 2011-05-30 | 2011-05-30 | 7 | 2011-05-30 | 2011-05-30 | 0d | 0d |  |  |  |  |
| 9 | 2 | **PLANIFICACIÓN** |  | 12d | 2011-05-31 | 2011-06-15 | 1 | 2011-05-31 | 2011-06-15 | 12d | 0d |  | 384h | 8,011.44 | 8,011.44 |
| 10 | 2.1 | Toma de Requisitos generales |  | 4d | 2011-05-31 | 2011-06-03 |  | 2011-05-31 | 2011-06-03 | 4d | 0d | Analista; Consultor de Procesos ITIL; Jefe de Proyecto | 96h | 2,142.72 | 2,142.72 |
| 11 | 2.2 | WBS |  | 1d | 2011-06-06 | 2011-06-06 | 10 | 2011-06-06 | 2011-06-06 | 1d | 0d | Consultor de Procesos ITIL; Jefe de Proyecto | 16h | 377.84 | 377.84 |
| 12 | 2.3 | Estimación de coste y tiempo de actividades |  | 2d | 2011-06-07 | 2011-06-08 | 11 | 2011-06-07 | 2011-06-08 | 2d | 0d | Analista; Consultor de Procesos ITIL | 32h | 631.36 | 631.36 |
| 13 | 2.4 | Asignación de recursos, RAM y organigrama |  | 1d | 2011-06-09 | 2011-06-09 | 12 | 2011-06-09 | 2011-06-09 | 1d | 0d | Analista; Consultor de Procesos ITIL | 16h | 315.68 | 315.68 |
| 14 | 2.5 | Presupuesto |  | 1d | 2011-06-09 | 2011-06-09 | 12 | 2011-06-09 | 2011-06-09 | 1d | 0d | Analista; Consultor de Procesos ITIL | 16h | 315.68 | 315.68 |
| 15 | 2.6 | Lista de riesgos identificados y planes de respuesta |  | 2d | 2011-06-10 | 2011-06-13 | 14, 13 | 2011-06-10 | 2011-06-13 | 2d | 0d | Analista; Consultor de Procesos ITIL | 32h | 631.36 | 631.36 |
| 16 | 2.7 | Cronograma |  | 2d | 2011-06-14 | 2011-06-15 | 15 | 2011-06-14 | 2011-06-15 | 2d | 0d | Analista; Consultor de Procesos ITIL; Jefe de Proyecto | 48h | 1,071.36 | 1,071.36 |
| 17 | 2.8 | Plan de Gestión de Alcance |  | 1d | 2011-06-06 | 2011-06-06 | 10 | 2011-06-06 | 2011-06-06 | 1d | 7d | Analista; Consultor de Procesos ITIL | 16h | 315.68 | 315.68 |
| 18 | 2.9 | Plan de Gestión de Tiempos |  | 1d | 2011-06-14 | 2011-06-14 | 13, 15, 10 | 2011-06-14 | 2011-06-14 | 1d | 1d | Analista; Consultor de Procesos ITIL | 16h | 315.68 | 315.68 |
| 19 | 2.10 | Plan de Gestión de Costes |  | 1d | 2011-06-10 | 2011-06-10 | 14, 13, 10 | 2011-06-10 | 2011-06-10 | 1d | 3d | Analista; Consultor de Procesos ITIL | 16h | 315.68 | 315.68 |
| 20 | 2.11 | Plan de Gestión de Calidad |  | 1d | 2011-06-06 | 2011-06-06 | 10 | 2011-06-06 | 2011-06-06 | 1d | 7d | Analista; Consultor de Procesos ITIL | 16h | 315.68 | 315.68 |
| 21 | 2.12 | Plan de Recursos Humanos |  | 1d | 2011-06-10 | 2011-06-10 | 10, 11, 12, 13 | 2011-06-10 | 2011-06-10 | 1d | 3d | Analista; Consultor de Procesos ITIL | 16h | 315.68 | 315.68 |
| 22 | 2.13 | Plan de Gestión de Comunicaciones |  | 1d | 2011-06-07 | 2011-06-07 | 10, 11 | 2011-06-07 | 2011-06-07 | 1d | 6d | Analista; Consultor de Procesos ITIL | 16h | 315.68 | 315.68 |
| 23 | 2.14 | Plan de Gestión de Riesgos |  | 1d | 2011-06-14 | 2011-06-14 | 10, 15 | 2011-06-14 | 2011-06-14 | 1d | 1d | Analista; Consultor de Procesos ITIL | 16h | 315.68 | 315.68 |
| 24 | 2.15 | Plan de Gestión de Adquisiciones |  | 1d | 2011-06-10 | 2011-06-10 | 10, 11, 14, 12 | 2011-06-10 | 2011-06-10 | 1d | 3d | Analista; Consultor de Procesos ITIL | 16h | 315.68 | 315.68 |
| 25 | 2.16 | HITO: PLANIFICACIÓN TERMINADA | milestone | 0d | 2011-06-15 | 2011-06-15 | 16, 17, 18, 19, 20, 21, 22, 23, 24 | 2011-06-15 | 2011-06-15 | 0d | 0d |  |  |  |  |

| ID | WBS | Task | Type | Duration | Start | Finish | Predecessors | Baseline start | Baseline finish | Baseline duration | Total slack | Free slack |
| --- | --- | --- | --- | --- | --- | --- | --- | --- | --- | --- | --- | --- |
| 26 | 3 | **EJECUCIÓN** |  | 171d | 2011-06-16 | 2012-02-09 | 9 | 2011-06-16 | 2012-02-09 | 171d | 0d |  |
| 27 | 3.1 | **Definición de procedimientos de soporte (ITIL)** |  | 24d | 2011-06-16 | 2011-07-19 |  | 2011-06-16 | 2011-07-19 | 24d | 147d | 0d |
| 28 | 3.1.1 | Proveedor A (Subcontratación) |  | 24d | 2011-06-16 | 2011-07-19 |  | 2011-06-16 | 2011-07-19 | 24d | 147d | 0d |
| 29 | 3.1.2 | Seguimiento específico por Consultor de Procesos |  | 24d | 2011-06-16 | 2011-07-19 |  | 2011-06-16 | 2011-07-19 | 24d | 147d | 0d |
| 30 | 3.1.3 | HITO: PROD1: Procedimientos de soporte. Entrega | milestone | 0d | 2011-07-19 | 2011-07-19 | 29, 28 | 2011-07-19 | 2011-07-19 | 0d | 147d |  |
| 31 | 3.2 | **Definición del catálogo de servicios de negocio, TI y mantenimiento** |  | 38d | 2011-06-16 | 2011-08-08 |  | 2011-06-16 | 2011-08-08 | 38d | 0d |  |
| 32 | 3.2.1 | **Toma de requisitos** |  | 5d | 2011-06-16 | 2011-06-22 |  | 2011-06-16 | 2011-06-22 | 5d | 0d |  |
| 33 | 3.2.1.1 | Entrevista con el cliente |  | 3d | 2011-06-16 | 2011-06-20 |  | 2011-06-16 | 2011-06-20 | 3d | 2d |  |
| 34 | 3.2.1.2 | Elaboracion de la lista de requisitos |  | 5d | 2011-06-16 | 2011-06-22 |  | 2011-06-16 | 2011-06-22 | 5d | 0d |  |
| 35 | 3.2.1.3 | HITO: PROD2: Entrega del documento de requisitos | milestone | 0d | 2011-06-22 | 2011-06-22 | 34 | 2011-06-22 | 2011-06-22 | 0d | 0d |  |
| 36 | 3.2.2 | **Análisis** |  | 8d | 2011-06-23 | 2011-07-04 | 32 | 2011-06-23 | 2011-07-04 | 8d | 0d |  |
| 37 | 3.2.2.1 | Recopilacion de elementos del catálogo |  | 8d | 2011-06-23 | 2011-07-04 |  | 2011-06-23 | 2011-07-04 | 8d | 0d |  |
| 38 | 3.2.2.2 | Definición de casos de uso y clases de análisis |  | 4d | 2011-06-28 | 2011-07-01 | 37FS-5d | 2011-06-28 | 2011-07-01 | 4d | 1d | 0d |
| 39 | 3.2.2.3 | HITO: PROD2: Entrega resultados de análisis | milestone | 0d | 2011-07-01 | 2011-07-01 | 38 | 2011-07-01 | 2011-07-01 | 0d | 1d |  |
| 40 | 3.2.3 | **Diseño** |  | 15d | 2011-07-05 | 2011-07-25 | 36 | 2011-07-05 | 2011-07-25 | 15d | 0d |  |
| 41 | 3.2.3.1 | Diagramas de diseño |  | 10d | 2011-07-05 | 2011-07-18 |  | 2011-07-05 | 2011-07-18 | 10d | 0d |  |
| 42 | 3.2.3.2 | Diseño de interfaz |  | 5d | 2011-07-19 | 2011-07-25 | 41 | 2011-07-19 | 2011-07-25 | 5d | 0d |  |
| 43 | 3.2.3.3 | HITO: PROD2: Entrega del documento de diseño | milestone | 0d | 2011-07-25 | 2011-07-25 | 42, 41 | 2011-07-25 | 2011-07-25 | 0d | 0d |  |
| 44 | 3.2.4 | **Desarrollo** |  | 15d | 2011-07-12 | 2011-08-01 | 40FS-10d | 2011-07-12 | 2011-08-01 | 15d | 0d |  |
| 45 | 3.2.4.1 | Desarrollo de interfaz y módulos |  | 15d | 2011-07-12 | 2011-08-01 |  | 2011-07-12 | 2011-08-01 | 15d | 0d |  |
| 46 | 3.2.4.2 | HITO: PROD2: Entrega del catálogo de servicios. Entrega inicial | milestone | 0d | 2011-08-01 | 2011-08-01 | 45 | 2011-08-01 | 2011-08-01 | 0d | 0d |  |
| 47 | 3.2.5 | **Pruebas** |  | 5d | 2011-08-02 | 2011-08-08 | 44 | 2011-08-02 | 2011-08-08 | 5d | 0d |  |
| 48 | 3.2.5.1 | Pruebas unitarias |  | 3d | 2011-08-02 | 2011-08-04 |  | 2011-08-02 | 2011-08-04 | 3d | 0d |  |
| 49 | 3.2.5.2 | Pruebas globales |  | 2d | 2011-08-05 | 2011-08-08 | 48 | 2011-08-05 | 2011-08-08 | 2d | 0d |  |
| 50 | 3.2.6 | HITO: PROD2: Entrega del catálogo de servicios. Entrega final | milestone | 0d | 2011-08-08 | 2011-08-08 | 47 | 2011-08-08 | 2011-08-08 | 0d | 0d |  |

| ID | WBS | Task | Type | Duration | Start | Finish | Predecessors | Baseline start | Baseline finish | Baseline duration | Total slack |
| --- | --- | --- | --- | --- | --- | --- | --- | --- | --- | --- | --- |
| 51 | 3.3 | **Diseño y desarrollo de una herramienta SW** |  | 75d | 2011-08-09 | 2011-11-21 | 31 | 2011-08-09 | 2011-11-21 | 75d | 0d |
| 52 | 3.3.1 | **Toma de requisitos** |  | 5d | 2011-08-09 | 2011-08-15 |  | 2011-08-09 | 2011-08-15 | 5d | 0d |
| 53 | 3.3.1.1 | Entrevista con el cliente |  | 3d | 2011-08-09 | 2011-08-11 |  | 2011-08-09 | 2011-08-11 | 3d | 2d |
| 54 | 3.3.1.2 | Elaboracion de la lista de requisitos |  | 5d | 2011-08-09 | 2011-08-15 |  | 2011-08-09 | 2011-08-15 | 5d | 0d |
| 55 | 3.3.1.3 | HITO: PROD3: Entrega del documento de requisitos | milestone | 0d | 2011-08-15 | 2011-08-15 | 54 | 2011-08-15 | 2011-08-15 | 0d | 0d |
| 56 | 3.3.2 | **Análisis** |  | 13d | 2011-08-16 | 2011-09-01 | 52 | 2011-08-16 | 2011-09-01 | 13d | 0d |
| 57 | 3.3.2.1 | Definición de casos de uso y clases de análisis |  | 13d | 2011-08-16 | 2011-09-01 |  | 2011-08-16 | 2011-09-01 | 13d | 0d |
| 58 | 3.3.2.2 | HITO: PROD3: Entrega resultados de análisis | milestone | 0d | 2011-09-01 | 2011-09-01 | 57 | 2011-09-01 | 2011-09-01 | 0d | 0d |
| 59 | 3.3.3 | **Diseño** |  | 17d | 2011-08-26 | 2011-09-19 | 56FS-5d | 2011-08-26 | 2011-09-19 | 17d | 0d |
| 60 | 3.3.3.1 | Diagramas de diseño |  | 8d | 2011-08-26 | 2011-09-06 |  | 2011-08-26 | 2011-09-06 | 8d | 0d |
| 61 | 3.3.3.2 | Diseño de interfaz |  | 15d | 2011-08-30 | 2011-09-19 | 60FS-6d | 2011-08-30 | 2011-09-19 | 15d | 0d |
| 62 | 3.3.3.3 | HITO: PROD3: Entrega del documento de diseño | milestone | 0d | 2011-09-19 | 2011-09-19 | 61 | 2011-09-19 | 2011-09-19 | 0d | 0d |
| 63 | 3.3.4 | **Desarrollo** |  | 45d | 2011-09-06 | 2011-11-07 | 59FS-10d | 2011-09-06 | 2011-11-07 | 45d | 0d |
| 64 | 3.3.4.1 | Desarrollo de interfaz y módulos |  | 45d | 2011-09-06 | 2011-11-07 |  | 2011-09-06 | 2011-11-07 | 45d | 0d |
| 65 | 3.3.4.2 | HITO: PROD3: Entrega De herramienta software. Entrega inicial | milestone | 0d | 2011-11-07 | 2011-11-07 | 64 | 2011-11-07 | 2011-11-07 | 0d | 0d |
| 66 | 3.3.5 | **Pruebas** |  | 10d | 2011-11-08 | 2011-11-21 | 63 | 2011-11-08 | 2011-11-21 | 10d | 0d |
| 67 | 3.3.5.1 | Pruebas unitarias |  | 6d | 2011-11-08 | 2011-11-15 |  | 2011-11-08 | 2011-11-15 | 6d | 0d |
| 68 | 3.3.5.2 | Pruebas globales |  | 4d | 2011-11-16 | 2011-11-21 | 67 | 2011-11-16 | 2011-11-21 | 4d | 0d |
| 69 | 3.3.6 | HITO: PROD3: Entrega de herramienta software. Entrega final | milestone | 0d | 2011-11-21 | 2011-11-21 | 66 | 2011-11-21 | 2011-11-21 | 0d | 0d |
| 70 | 3.4 | **Herramienta de inventario de activos HW y SW** |  | 58d | 2011-11-22 | 2012-02-09 | 51 | 2011-11-22 | 2012-02-09 | 58d | 0d |
| 71 | 3.4.1 | **Toma de requisitos** |  | 6d | 2011-11-22 | 2011-11-29 |  | 2011-11-22 | 2011-11-29 | 6d | 0d |
| 72 | 3.4.1.1 | Entrevista con el cliente |  | 3d | 2011-11-22 | 2011-11-24 |  | 2011-11-22 | 2011-11-24 | 3d | 3d |
| 73 | 3.4.1.2 | Elaboracion de la lista de requisitos |  | 6d | 2011-11-22 | 2011-11-29 |  | 2011-11-22 | 2011-11-29 | 6d | 0d |
| 74 | 3.4.1.3 | HITO: PROD4: Entrega del documento de requisitos | milestone | 0d | 2011-11-29 | 2011-11-29 | 73 | 2011-11-29 | 2011-11-29 | 0d | 0d |

| ID | WBS | Task | Type | Duration | Start | Finish | Predecessors | Baseline start | Baseline finish | Baseline duration | Total slack | Free slack | Constraint | Resources | Work | Cost | Baseline cost |
| --- | --- | --- | --- | --- | --- | --- | --- | --- | --- | --- | --- | --- | --- | --- | --- | --- | --- |
| 75 | 3.4.2 | **Análisis** |  | 10d | 2011-11-30 | 2011-12-13 | 71 | 2011-11-30 | 2011-12-13 | 10d | 0d |  |  |  |  |  |  |
| 76 | 3.4.2.1 | Localización de los activos HW y SW |  | 5d | 2011-11-30 | 2011-12-06 |  | 2011-11-30 | 2011-12-06 | 5d | 5d |  |  |  |  |  |  |
| 77 | 3.4.2.2 | Análisis específico de la CMDB |  | 5d | 2011-11-30 | 2011-12-06 |  | 2011-11-30 | 2011-12-06 | 5d | 5d |  |  |  |  |  |  |
| 78 | 3.4.2.3 | Definición de casos de uso y clases de análisis |  | 10d | 2011-11-30 | 2011-12-13 |  | 2011-11-30 | 2011-12-13 | 10d | 0d |  |  |  |  |  |  |
| 79 | 3.4.2.4 | HITO: PROD4: Entrega resultados de análisis | milestone | 0d | 2011-12-13 | 2011-12-13 | 76, 77, 78 | 2011-12-13 | 2011-12-13 | 0d | 0d |  |  |  |  |  |  |
| 80 | 3.4.3 | **Diseño** |  | 15d | 2011-12-14 | 2012-01-03 | 75 | 2011-12-14 | 2012-01-03 | 15d | 0d |  |  |  |  |  |  |
| 81 | 3.4.3.1 | Diagramas de diseño |  | 10d | 2011-12-14 | 2011-12-27 |  | 2011-12-14 | 2011-12-27 | 10d | 0d |  |  |  |  |  |  |
| 82 | 3.4.3.2 | Diseño de interfaz |  | 10d | 2011-12-21 | 2012-01-03 | 81FS-5d | 2011-12-21 | 2012-01-03 | 10d | 0d |  |  |  |  |  |  |
| 83 | 3.4.3.3 | HITO: PROD4: Entrega del documento de diseño | milestone | 0d | 2012-01-03 | 2012-01-03 | 82 | 2012-01-03 | 2012-01-03 | 0d | 0d |  |  |  |  |  |  |
| 84 | 3.4.4 | **Desarrollo** |  | 30d | 2011-12-21 | 2012-01-31 | 80FS-10d | 2011-12-21 | 2012-01-31 | 30d | 0d |  |  |  |  |  |  |
| 85 | 3.4.4.1 | Desarrollo de interfaz y módulos |  | 20d | 2011-12-21 | 2012-01-17 |  | 2011-12-21 | 2012-01-17 | 20d | 0d |  |  |  |  |  |  |
| 86 | 3.4.4.2 | Parametrización y personalización |  | 20d | 2012-01-04 | 2012-01-31 | 85FS-10d | 2012-01-04 | 2012-01-31 | 20d | 0d |  |  |  |  |  |  |
| 87 | 3.4.4.3 | HITO: PROD4: Herramienta de inventario de activos HW y SW. Entrega inicial | milestone | 0d | 2012-01-31 | 2012-01-31 | 85, 86 | 2012-01-31 | 2012-01-31 | 0d | 0d |  |  |  |  |  |  |
| 88 | 3.4.5 | **Pruebas** |  | 7d | 2012-02-01 | 2012-02-09 | 84 | 2012-02-01 | 2012-02-09 | 7d | 0d |  |  |  |  |  |  |
| 89 | 3.4.5.1 | Pruebas unitarias |  | 4d | 2012-02-01 | 2012-02-06 |  | 2012-02-01 | 2012-02-06 | 4d | 0d |  |  |  |  |  |  |
| 90 | 3.4.5.2 | Pruebas globales |  | 3d | 2012-02-07 | 2012-02-09 | 89 | 2012-02-07 | 2012-02-09 | 3d | 0d |  |  |  |  |  |  |
| 91 | 3.4.6 | HITO: PROD4: Herramienta de inventario de activos HW y SW. Entrega final | milestone | 0d | 2012-02-09 | 2012-02-09 | 88 | 2012-02-09 | 2012-02-09 | 0d | 0d |  |  |  |  |  |  |
| 92 | 3.5 | HITO: EJECUCIÓN TERMINADA | milestone | 0d | 2012-02-09 | 2012-02-09 | 70 | 2012-02-09 | 2012-02-09 | 0d | 7d |  |  |  |  |  |  |
| 93 | 4 | **CONTROL** |  | 168d | 2011-06-16 | 2012-02-06 | 9 | 2011-06-16 | 2012-02-06 | 168d | 6d | 0d |  |  | 456h | 7,315.87 | 7,315.87 |
| 94 | 4.1 | **Seguimiento semanal general** |  | 168d | 2011-06-16 | 2012-02-06 |  | 2011-06-16 | 2012-02-06 | 168d | 6d |  |  |  | 312h | 3,355.87 | 3,355.87 |
| 95 | 4.1.1 | Seguimiento semanal general 1 |  | 1d | 2011-06-16 | 2011-06-16 |  | 2011-06-16 | 2011-06-16 | 1d | 173d |  | start no earlier than 2011-05-16 | Becario [80%]; Jefe de Proyecto [20%] | 8h | 86.05 | 86.05 |
| 96 | 4.1.2 | Seguimiento semanal general 2 |  | 1d | 2011-06-16 | 2011-06-16 |  | 2011-06-16 | 2011-06-16 | 1d | 173d |  | start no earlier than 2011-05-23 | Becario [80%]; Jefe de Proyecto [20%] | 8h | 86.05 | 86.05 |
| 97 | 4.1.3 | Seguimiento semanal general 3 |  | 1d | 2011-06-16 | 2011-06-16 |  | 2011-06-16 | 2011-06-16 | 1d | 173d |  | start no earlier than 2011-05-30 | Becario [80%]; Jefe de Proyecto [20%] | 8h | 86.05 | 86.05 |
| 98 | 4.1.4 | Seguimiento semanal general 4 |  | 1d | 2011-06-16 | 2011-06-16 |  | 2011-06-16 | 2011-06-16 | 1d | 173d |  | start no earlier than 2011-06-06 | Becario [80%]; Jefe de Proyecto [20%] | 8h | 86.05 | 86.05 |
| 99 | 4.1.5 | Seguimiento semanal general 5 |  | 1d | 2011-06-16 | 2011-06-16 |  | 2011-06-16 | 2011-06-16 | 1d | 173d |  | start no earlier than 2011-06-13 | Becario [80%]; Jefe de Proyecto [20%] | 8h | 86.05 | 86.05 |
| 100 | 4.1.6 | Seguimiento semanal general 6 |  | 1d | 2011-06-20 | 2011-06-20 |  | 2011-06-20 | 2011-06-20 | 1d | 171d |  | start no earlier than 2011-06-20 | Becario [80%]; Jefe de Proyecto [20%] | 8h | 86.05 | 86.05 |
| 101 | 4.1.7 | Seguimiento semanal general 7 |  | 1d | 2011-06-27 | 2011-06-27 |  | 2011-06-27 | 2011-06-27 | 1d | 166d |  | start no earlier than 2011-06-27 | Becario [80%]; Jefe de Proyecto [20%] | 8h | 86.05 | 86.05 |
| 102 | 4.1.8 | Seguimiento semanal general 8 |  | 1d | 2011-07-04 | 2011-07-04 |  | 2011-07-04 | 2011-07-04 | 1d | 161d |  | start no earlier than 2011-07-04 | Becario [80%]; Jefe de Proyecto [20%] | 8h | 86.05 | 86.05 |
| 103 | 4.1.9 | Seguimiento semanal general 9 |  | 1d | 2011-07-11 | 2011-07-11 |  | 2011-07-11 | 2011-07-11 | 1d | 156d |  | start no earlier than 2011-07-11 | Becario [80%]; Jefe de Proyecto [20%] | 8h | 86.05 | 86.05 |
| 104 | 4.1.10 | Seguimiento semanal general 10 |  | 1d | 2011-07-18 | 2011-07-18 |  | 2011-07-18 | 2011-07-18 | 1d | 151d |  | start no earlier than 2011-07-18 | Becario [80%]; Jefe de Proyecto [20%] | 8h | 86.05 | 86.05 |
| 105 | 4.1.11 | Seguimiento semanal general 11 |  | 1d | 2011-07-25 | 2011-07-25 |  | 2011-07-25 | 2011-07-25 | 1d | 146d |  | start no earlier than 2011-07-25 | Becario [80%]; Jefe de Proyecto [20%] | 8h | 86.05 | 86.05 |
| 106 | 4.1.12 | Seguimiento semanal general 12 |  | 1d | 2011-08-01 | 2011-08-01 |  | 2011-08-01 | 2011-08-01 | 1d | 141d |  | start no earlier than 2011-08-01 | Becario [80%]; Jefe de Proyecto [20%] | 8h | 86.05 | 86.05 |
| 107 | 4.1.13 | Seguimiento semanal general 13 |  | 1d | 2011-08-08 | 2011-08-08 |  | 2011-08-08 | 2011-08-08 | 1d | 136d |  | start no earlier than 2011-08-08 | Becario [80%]; Jefe de Proyecto [20%] | 8h | 86.05 | 86.05 |
| 108 | 4.1.14 | Seguimiento semanal general 14 |  | 1d | 2011-08-15 | 2011-08-15 |  | 2011-08-15 | 2011-08-15 | 1d | 131d |  | start no earlier than 2011-08-15 | Becario [80%]; Jefe de Proyecto [20%] | 8h | 86.05 | 86.05 |
| 109 | 4.1.15 | Seguimiento semanal general 15 |  | 1d | 2011-08-22 | 2011-08-22 |  | 2011-08-22 | 2011-08-22 | 1d | 126d |  | start no earlier than 2011-08-22 | Becario [80%]; Jefe de Proyecto [20%] | 8h | 86.05 | 86.05 |
| 110 | 4.1.16 | Seguimiento semanal general 16 |  | 1d | 2011-08-29 | 2011-08-29 |  | 2011-08-29 | 2011-08-29 | 1d | 121d |  | start no earlier than 2011-08-29 | Becario [80%]; Jefe de Proyecto [20%] | 8h | 86.05 | 86.05 |
| 111 | 4.1.17 | Seguimiento semanal general 17 |  | 1d | 2011-09-05 | 2011-09-05 |  | 2011-09-05 | 2011-09-05 | 1d | 116d |  | start no earlier than 2011-09-05 | Becario [80%]; Jefe de Proyecto [20%] | 8h | 86.05 | 86.05 |
| 112 | 4.1.18 | Seguimiento semanal general 18 |  | 1d | 2011-09-12 | 2011-09-12 |  | 2011-09-12 | 2011-09-12 | 1d | 111d |  | start no earlier than 2011-09-12 | Becario [80%]; Jefe de Proyecto [20%] | 8h | 86.05 | 86.05 |
| 113 | 4.1.19 | Seguimiento semanal general 19 |  | 1d | 2011-09-19 | 2011-09-19 |  | 2011-09-19 | 2011-09-19 | 1d | 106d |  | start no earlier than 2011-09-19 | Becario [80%]; Jefe de Proyecto [20%] | 8h | 86.05 | 86.05 |
| 114 | 4.1.20 | Seguimiento semanal general 20 |  | 1d | 2011-09-26 | 2011-09-26 |  | 2011-09-26 | 2011-09-26 | 1d | 101d |  | start no earlier than 2011-09-26 | Becario [80%]; Jefe de Proyecto [20%] | 8h | 86.05 | 86.05 |
| 115 | 4.1.21 | Seguimiento semanal general 21 |  | 1d | 2011-10-03 | 2011-10-03 |  | 2011-10-03 | 2011-10-03 | 1d | 96d |  | start no earlier than 2011-10-03 | Becario [80%]; Jefe de Proyecto [20%] | 8h | 86.05 | 86.05 |
| 116 | 4.1.22 | Seguimiento semanal general 22 |  | 1d | 2011-10-10 | 2011-10-10 |  | 2011-10-10 | 2011-10-10 | 1d | 91d |  | start no earlier than 2011-10-10 | Becario [80%]; Jefe de Proyecto [20%] | 8h | 86.05 | 86.05 |
| 117 | 4.1.23 | Seguimiento semanal general 23 |  | 1d | 2011-10-17 | 2011-10-17 |  | 2011-10-17 | 2011-10-17 | 1d | 86d |  | start no earlier than 2011-10-17 | Becario [80%]; Jefe de Proyecto [20%] | 8h | 86.05 | 86.05 |
| 118 | 4.1.24 | Seguimiento semanal general 24 |  | 1d | 2011-10-24 | 2011-10-24 |  | 2011-10-24 | 2011-10-24 | 1d | 81d |  | start no earlier than 2011-10-24 | Becario [80%]; Jefe de Proyecto [20%] | 8h | 86.05 | 86.05 |
| 119 | 4.1.25 | Seguimiento semanal general 25 |  | 1d | 2011-10-31 | 2011-10-31 |  | 2011-10-31 | 2011-10-31 | 1d | 76d |  | start no earlier than 2011-10-31 | Becario [80%]; Jefe de Proyecto [20%] | 8h | 86.05 | 86.05 |
| 120 | 4.1.26 | Seguimiento semanal general 26 |  | 1d | 2011-11-07 | 2011-11-07 |  | 2011-11-07 | 2011-11-07 | 1d | 71d |  | start no earlier than 2011-11-07 | Becario [80%]; Jefe de Proyecto [20%] | 8h | 86.05 | 86.05 |
| 121 | 4.1.27 | Seguimiento semanal general 27 |  | 1d | 2011-11-14 | 2011-11-14 |  | 2011-11-14 | 2011-11-14 | 1d | 66d |  | start no earlier than 2011-11-14 | Becario [80%]; Jefe de Proyecto [20%] | 8h | 86.05 | 86.05 |
| 122 | 4.1.28 | Seguimiento semanal general 28 |  | 1d | 2011-11-21 | 2011-11-21 |  | 2011-11-21 | 2011-11-21 | 1d | 61d |  | start no earlier than 2011-11-21 | Becario [80%]; Jefe de Proyecto [20%] | 8h | 86.05 | 86.05 |
| 123 | 4.1.29 | Seguimiento semanal general 29 |  | 1d | 2011-11-28 | 2011-11-28 |  | 2011-11-28 | 2011-11-28 | 1d | 56d |  | start no earlier than 2011-11-28 | Becario [80%]; Jefe de Proyecto [20%] | 8h | 86.05 | 86.05 |
| 124 | 4.1.30 | Seguimiento semanal general 30 |  | 1d | 2011-12-05 | 2011-12-05 |  | 2011-12-05 | 2011-12-05 | 1d | 51d |  | start no earlier than 2011-12-05 | Becario [80%]; Jefe de Proyecto [20%] | 8h | 86.05 | 86.05 |
| 125 | 4.1.31 | Seguimiento semanal general 31 |  | 1d | 2011-12-12 | 2011-12-12 |  | 2011-12-12 | 2011-12-12 | 1d | 46d |  | start no earlier than 2011-12-12 | Becario [80%]; Jefe de Proyecto [20%] | 8h | 86.05 | 86.05 |
| 126 | 4.1.32 | Seguimiento semanal general 32 |  | 1d | 2011-12-19 | 2011-12-19 |  | 2011-12-19 | 2011-12-19 | 1d | 41d |  | start no earlier than 2011-12-19 | Becario [80%]; Jefe de Proyecto [20%] | 8h | 86.05 | 86.05 |
| 127 | 4.1.33 | Seguimiento semanal general 33 |  | 1d | 2011-12-26 | 2011-12-26 |  | 2011-12-26 | 2011-12-26 | 1d | 36d |  | start no earlier than 2011-12-26 | Becario [80%]; Jefe de Proyecto [20%] | 8h | 86.05 | 86.05 |
| 128 | 4.1.34 | Seguimiento semanal general 34 |  | 1d | 2012-01-02 | 2012-01-02 |  | 2012-01-02 | 2012-01-02 | 1d | 31d |  | start no earlier than 2012-01-02 | Becario [80%]; Jefe de Proyecto [20%] | 8h | 86.05 | 86.05 |
| 129 | 4.1.35 | Seguimiento semanal general 35 |  | 1d | 2012-01-09 | 2012-01-09 |  | 2012-01-09 | 2012-01-09 | 1d | 26d |  | start no earlier than 2012-01-09 | Becario [80%]; Jefe de Proyecto [20%] | 8h | 86.05 | 86.05 |
| 130 | 4.1.36 | Seguimiento semanal general 36 |  | 1d | 2012-01-16 | 2012-01-16 |  | 2012-01-16 | 2012-01-16 | 1d | 21d |  | start no earlier than 2012-01-16 | Becario [80%]; Jefe de Proyecto [20%] | 8h | 86.05 | 86.05 |
| 131 | 4.1.37 | Seguimiento semanal general 37 |  | 1d | 2012-01-23 | 2012-01-23 |  | 2012-01-23 | 2012-01-23 | 1d | 16d |  | start no earlier than 2012-01-23 | Becario [80%]; Jefe de Proyecto [20%] | 8h | 86.05 | 86.05 |
| 132 | 4.1.38 | Seguimiento semanal general 38 |  | 1d | 2012-01-30 | 2012-01-30 |  | 2012-01-30 | 2012-01-30 | 1d | 11d |  | start no earlier than 2012-01-30 | Becario [80%]; Jefe de Proyecto [20%] | 8h | 86.05 | 86.05 |
| 133 | 4.1.39 | Seguimiento semanal general 39 |  | 1d | 2012-02-06 | 2012-02-06 |  | 2012-02-06 | 2012-02-06 | 1d | 6d |  | start no earlier than 2012-02-06 | Becario [80%]; Jefe de Proyecto [20%] | 8h | 86.05 | 86.05 |

| ID | WBS | Task | Type | Duration | Start | Finish | Predecessors | Baseline start | Baseline finish | Baseline duration | Total slack | Constraint | Resources | Work | Cost | Baseline cost |
| --- | --- | --- | --- | --- | --- | --- | --- | --- | --- | --- | --- | --- | --- | --- | --- | --- |
| 134 | 4.2 | **Seguimiento mensual específico** |  | 154d | 2011-06-16 | 2012-01-17 |  | 2011-06-16 | 2012-01-17 | 154d | 20d |  |  | 144h | 3,960 | 3,960 |
| 135 | 4.2.1 | Seguimiento mensual específico 1 |  | 2d | 2011-06-16 | 2011-06-17 |  | 2011-06-16 | 2011-06-17 | 2d | 172d | start no earlier than 2011-05-16 | Jefe de Proyecto | 16h | 440 | 440 |
| 136 | 4.2.2 | Seguimiento mensual específico 2 |  | 2d | 2011-06-20 | 2011-06-21 |  | 2011-06-20 | 2011-06-21 | 2d | 170d | start no earlier than 2011-06-20 | Jefe de Proyecto | 16h | 440 | 440 |
| 137 | 4.2.3 | Seguimiento mensual específico 3 |  | 2d | 2011-07-18 | 2011-07-19 |  | 2011-07-18 | 2011-07-19 | 2d | 150d | start no earlier than 2011-07-18 | Jefe de Proyecto | 16h | 440 | 440 |
| 138 | 4.2.4 | Seguimiento mensual específico 4 |  | 2d | 2011-08-15 | 2011-08-16 |  | 2011-08-15 | 2011-08-16 | 2d | 130d | start no earlier than 2011-08-15 | Jefe de Proyecto | 16h | 440 | 440 |
| 139 | 4.2.5 | Seguimiento mensual específico 5 |  | 2d | 2011-09-19 | 2011-09-20 |  | 2011-09-19 | 2011-09-20 | 2d | 105d | start no earlier than 2011-09-19 | Jefe de Proyecto | 16h | 440 | 440 |
| 140 | 4.2.6 | Seguimiento mensual específico 6 |  | 2d | 2011-10-17 | 2011-10-18 |  | 2011-10-17 | 2011-10-18 | 2d | 85d | start no earlier than 2011-10-17 | Jefe de Proyecto | 16h | 440 | 440 |
| 141 | 4.2.7 | Seguimiento mensual específico 7 |  | 2d | 2011-11-21 | 2011-11-22 |  | 2011-11-21 | 2011-11-22 | 2d | 60d | start no earlier than 2011-11-21 | Jefe de Proyecto | 16h | 440 | 440 |
| 142 | 4.2.8 | Seguimiento mensual específico 8 |  | 2d | 2011-12-19 | 2011-12-20 |  | 2011-12-19 | 2011-12-20 | 2d | 40d | start no earlier than 2011-12-19 | Jefe de Proyecto | 16h | 440 | 440 |
| 143 | 4.2.9 | Seguimiento mensual específico 9 |  | 2d | 2012-01-16 | 2012-01-17 |  | 2012-01-16 | 2012-01-17 | 2d | 20d | start no earlier than 2012-01-16 | Jefe de Proyecto | 16h | 440 | 440 |
| 144 | 5 | **CIERRE** |  | 154d | 2011-07-20 | 2012-02-20 |  | 2011-07-20 | 2012-02-20 | 154d | 0d |  |  |  |  |  |
| 145 | 5.1 | Edición final de la Documentación |  | 4d | 2012-02-07 | 2012-02-10 | 93 | 2012-02-07 | 2012-02-10 | 4d | 6d |  |  |  |  |  |
| 146 | 5.2 | **Informe de Cierre del Proyecto** |  | 154d | 2011-07-20 | 2012-02-20 |  | 2011-07-20 | 2012-02-20 | 154d | 0d |  |  |  |  |  |
| 147 | 5.2.1 | Cierre de Producto 1 |  | 2d | 2011-07-20 | 2011-07-21 | 27 | 2011-07-20 | 2011-07-21 | 2d | 147d |  |  |  |  |  |
| 148 | 5.2.2 | Cierre de Producto 2 |  | 2d | 2011-08-09 | 2011-08-10 | 31 | 2011-08-09 | 2011-08-10 | 2d | 133d |  |  |  |  |  |
| 149 | 5.2.3 | Cierre de Producto 3 |  | 2d | 2011-11-22 | 2011-11-23 | 51 | 2011-11-22 | 2011-11-23 | 2d | 58d |  |  |  |  |  |
| 150 | 5.2.4 | Cierre de Producto 4 |  | 2d | 2012-02-10 | 2012-02-13 | 70 | 2012-02-10 | 2012-02-13 | 2d | 0d |  |  |  |  |  |
| 151 | 5.2.5 | Cierre de Proyecto |  | 5d | 2012-02-14 | 2012-02-20 | 150, 147, 148, 149 | 2012-02-14 | 2012-02-20 | 5d | 0d |  |  |  |  |  |
| 152 | 5.3 | Cierre de Adquisiciones |  | 3d | 2011-07-20 | 2011-07-22 | 27 | 2011-07-20 | 2011-07-22 | 3d | 151d |  |  |  |  |  |
| 153 | 5.4 | HITO: Cierre del Proyecto | milestone | 0d | 2012-02-20 | 2012-02-20 | 146, 152 | 2012-02-20 | 2012-02-20 | 0d | 0d |  |  |  |  |  |

Notes:
- 134: Control del Alcance / Control del Coste / Control del Cronograma / Control de Calidad / Control de Riesgos / Informe de rendimiento
